# GHealth2

Schedule from MS Project, 2016-03-13 to 2016-06-21, A marks actual dates.

## Calendars

- GHealth: Mon-Thu 08:00-12:00, 13:00-17:00; Fri-Sat off; Sun 08:00-12:00, 13:00-17:00. Exceptions (off unless hours are given): 2016-03-24 (Purim), 2016-04-22 to 2016-04-29 (Pesah), 2016-05-11 to 2016-05-12 (Zicharon & atsamaot), 2016-05-24 to 2016-05-25 (Student Day), 2016-06-12 (Shvoaoot).

## Resources

| Resource |
| --- |
| Ahdab |
| Muhamad |
| Maysam |
| Boulus |
| Ahmad |

## Schedule

| ID | WBS | Task | Type | Duration | Start | Finish | Predecessors | Complete | Resources | Work | Actual work |
| --- | --- | --- | --- | --- | --- | --- | --- | --- | --- | --- | --- |
| 1 | 1 | **Project Organization** |  | 4.5d | 2016-03-13 08:00 A | 2016-03-17 12:00 A |  | 100% |  | 12h | 12h |
| 2 | 1.1 | **Week1** |  | 4.5d | 2016-03-13 08:00 A | 2016-03-17 12:00 A |  | 100% |  | 12h | 12h |
| 3 | 1.1.1 | Team Organization |  | 3d | 2016-03-13 08:00 A | 2016-03-15 17:00 A |  | 100% |  |  |  |
| 4 | 1.1.2 | **scope** |  | 1.5d | 2016-03-16 08:00 A | 2016-03-17 12:00 A | 3 | 100% |  | 12h | 12h |
| 5 | 1.1.2.1 | Define preliminary resources |  | 1d | 2016-03-16 08:00 A | 2016-03-16 17:00 A | 3 | 100% | Ahdab [20%]; Ahmad [20%]; Boulus [20%]; Maysam [20%]; Muhamad [20%] | 8h | 8h |
| 6 | 1.1.2.2 | First Team Meeting-Complete Organization |  | 4h | 2016-03-17 08:00 A | 2016-03-17 12:00 A | 5 | 100% | Ahdab [20%]; Ahmad [20%]; Boulus [20%]; Maysam [20%]; Muhamad [20%] | 4h | 4h |
| 7 | 1.1.3 | Scope complete | milestone | 0d | 2016-03-17 12:00 A | 2016-03-17 12:00 A | 4 | 100% |  |  |  |
| 8 | 2 | **Assignment ONE: Project Planning, Use Case Diagram, Questions, & Acceptance Testing** |  | 10d | 2016-03-20 08:00 A | 2016-04-03 17:00 A | 7 | 100% |  | 88.17h | 88.17h |
| 9 | 2.1 | **Week2** |  | 3.31d | 2016-03-20 08:00 A | 2016-03-23 10:30 A |  | 100% |  | 31.17h | 31.17h |
| 10 | 2.1.1 | Planning of a project |  | 1d | 2016-03-20 08:00 A | 2016-03-20 17:00 A |  | 100% | Ahdab [20%]; Ahmad [20%]; Boulus [20%]; Maysam [20%]; Muhamad [20%] | 8h | 8h |
| 11 | 2.1.2 | ms-project :first planning |  | 2h | 2016-03-21 08:00 A | 2016-03-21 10:00 A | 10 | 100% | Ahdab [50%]; Muhamad [50%] | 2h | 2h |
| 12 | 2.1.3 | **Design of a system Step1** |  | 2.06d | 2016-03-21 10:00 A | 2016-03-23 10:30 A | 10, 11 | 100% |  | 21.17h | 21.17h |
| 13 | 2.1.3.1 | **Creating Use Case diagram** |  | 2.06d | 2016-03-21 10:00 A | 2016-03-23 10:30 A |  | 100% |  | 21.17h | 21.17h |
| 14 | 2.1.3.1.1 | **Description of <Log in>** |  | 0.12d | 2016-03-21 10:00 A | 2016-03-21 11:00 A |  | 100% |  | 1h | 1h |
| 15 | 2.1.3.1.1.1 | Creating flow of events, info notes, etc. |  | 1h | 2016-03-21 10:00 A | 2016-03-21 11:00 A |  | 100% | Maysam [20%]; Muhamad [20%]; Ahdab [20%]; Ahmad [20%]; Boulus [20%] | 1h | 1h |
| 16 | 2.1.3.1.2 | **Description of <Documentation of HMO Approval>** |  | 0.12d | 2016-03-21 11:00 A | 2016-03-21 12:00 A | 14 | 100% |  | 1h | 1h |
| 17 | 2.1.3.1.2.1 | Creating flow of events, info notes, etc. |  | 1h | 2016-03-21 11:00 A | 2016-03-21 12:00 A |  | 100% | Maysam [40%]; Muhamad [40%]; Ahmad [20%] | 1h | 1h |
| 18 | 2.1.3.1.3 | **Description of <Add New Patient>** |  | 0.12d | 2016-03-21 10:00 A | 2016-03-21 11:00 A |  | 100% |  | 1h | 1h |
| 19 | 2.1.3.1.3.1 | Creating flow of events, info notes, etc. |  | 1h | 2016-03-21 10:00 A | 2016-03-21 11:00 A |  | 100% | Ahmad [20%]; Maysam [40%]; Muhamad [40%] | 1h | 1h |
| 20 | 2.1.3.1.4 | **Description of <Patient Identification>** |  | 0.12d | 2016-03-21 13:00 A | 2016-03-21 14:00 A | 16 | 100% |  | 1h | 1h |
| 21 | 2.1.3.1.4.1 | Creating flow of events, info notes, etc. |  | 1h | 2016-03-21 13:00 A | 2016-03-21 14:00 A |  | 100% | Ahmad [20%]; Maysam [40%]; Muhamad [40%] | 1h | 1h |
| 22 | 2.1.3.1.5 | **Description of <Appointment Setting>** |  | 0.38d | 2016-03-21 14:00 A | 2016-03-21 17:00 A | 20 | 100% |  | 3h | 3h |
| 23 | 2.1.3.1.5.1 | Creating flow of events, info notes, etc. |  | 1h | 2016-03-21 15:00 A | 2016-03-21 16:00 A |  | 100% | Ahmad [20%]; Maysam [40%]; Muhamad [40%] | 1h | 1h |
| 24 | 2.1.3.1.5.2 | **Included use case<Choose speciality>** |  | 0.12d | 2016-03-21 14:00 A | 2016-03-21 15:00 A |  | 100% |  | 1h | 1h |
| 25 | 2.1.3.1.5.2.1 | Creating flow of events, info notes, etc. |  | 1h | 2016-03-21 14:00 A | 2016-03-21 15:00 A |  | 100% | Ahmad [20%]; Maysam [40%]; Muhamad [40%] | 1h | 1h |

Notes:
- 5: We need to define: / ·resources; / ·tools; / ·responsible; / ·meetings; / ·integration; / ·testing; / ·check-ins.

| ID | WBS | Task | Duration | Start | Finish | Predecessors | Complete | Resources | Work | Actual work |
| --- | --- | --- | --- | --- | --- | --- | --- | --- | --- | --- |
| 26 | 2.1.3.1.5.3 | **Included use case<Choose Doctor>** | 0.06d | 2016-03-21 16:00 A | 2016-03-21 16:30 A | 23 | 100% |  | 0.5h | 0.5h |
| 27 | 2.1.3.1.5.3.1 | Creating flow of events, info notes, etc. | 0.5h | 2016-03-21 16:00 A | 2016-03-21 16:30 A |  | 100% | Maysam [40%]; Muhamad [40%]; Ahmad [20%] | 0.5h | 0.5h |
| 28 | 2.1.3.1.5.4 | **Included Use Case<Choose Time>** | 0.06d | 2016-03-21 16:30 A | 2016-03-21 17:00 A | 26 | 100% |  | 0.5h | 0.5h |
| 29 | 2.1.3.1.5.4.1 | Creating flow of events, info notes, etc. | 0.5h | 2016-03-21 16:30 A | 2016-03-21 17:00 A |  | 100% | Maysam [40%]; Muhamad [40%]; Ahmad [20%] | 0.5h | 0.5h |
| 30 | 2.1.3.1.6 | **Description of <Cancel Appointment>** | 0.06d | 2016-03-22 09:00 A | 2016-03-22 09:30 A |  | 100% |  | 0.5h | 0.5h |
| 31 | 2.1.3.1.6.1 | Creating flow of events, info notes, etc. | 0.5h | 2016-03-22 09:00 A | 2016-03-22 09:30 A |  | 100% | Maysam [40%]; Muhamad [40%]; Ahmad [20%] | 0.5h | 0.5h |
| 32 | 2.1.3.1.7 | **Description of <Viewing Medical Record>** | 0.19d | 2016-03-22 09:30 A | 2016-03-22 11:00 A | 30 | 100% |  | 1.9h | 1.9h |
| 33 | 2.1.3.1.7.1 | Creating flow of events, info notes, etc. | 0.5h | 2016-03-22 09:30 A | 2016-03-22 10:00 A |  | 100% | Maysam [40%]; Ahmad [40%]; Muhamad [20%] | 0.5h | 0.5h |
| 34 | 2.1.3.1.7.2 | **included Use Case<Open Medical record>** | 0.12d | 2016-03-22 10:00 A | 2016-03-22 11:00 A | 33 | 100% |  | 0.9h | 0.9h |
| 35 | 2.1.3.1.7.2.1 | Creating flow of events, info notes, etc. | 1h | 2016-03-22 10:00 A | 2016-03-22 11:00 A |  | 100% | Maysam [40%]; Ahmad [40%]; Muhamad [20%] | 0.9h | 0.9h |
| 36 | 2.1.3.1.7.3 | **Extended Use Case<searching>** | 0.06d | 2016-03-22 09:30 A | 2016-03-22 10:00 A |  | 100% |  | 0.5h | 0.5h |
| 37 | 2.1.3.1.7.3.1 | Creating flow of events, info notes, etc. | 0.5h | 2016-03-22 09:30 A | 2016-03-22 10:00 A |  | 100% | Ahmad [40%]; Maysam [40%]; Muhamad [20%] | 0.5h | 0.5h |
| 38 | 2.1.3.1.8 | **Description of <Visit Documentation>** | 0.12d | 2016-03-22 11:00 A | 2016-03-22 12:00 A | 32 | 100% |  | 0.9h | 0.9h |
| 39 | 2.1.3.1.8.1 | Creating flow of events, info notes, etc. | 1h | 2016-03-22 11:00 A | 2016-03-22 12:00 A |  | 100% | Ahmad [40%]; Maysam [40%]; Muhamad [20%] | 0.9h | 0.9h |
| 40 | 2.1.3.1.9 | **Description of <Producing medical test Referral>** | 0.12d | 2016-03-22 13:30 A | 2016-03-22 14:30 A | 38 | 100% |  | 1h | 1h |
| 41 | 2.1.3.1.9.1 | Creating flow of events, info notes, etc. | 1h | 2016-03-22 13:30 A | 2016-03-22 14:30 A |  | 100% | Ahmad [40%]; Maysam [40%]; Muhamad [20%] | 1h | 1h |
| 42 | 2.1.3.1.10 | **Description of <Viewing Referral info>** | 0.06d | 2016-03-22 14:30 A | 2016-03-22 15:00 A | 40 | 100% |  | 0.5h | 0.5h |
| 43 | 2.1.3.1.10.1 | Creating flow of events, info notes, etc. | 0.5h | 2016-03-22 14:30 A | 2016-03-22 15:00 A |  | 100% | Ahmad [40%]; Maysam [40%]; Muhamad [20%] | 0.5h | 0.5h |
| 44 | 2.1.3.1.11 | **Description of <Filling test results>** | 0.12d | 2016-03-22 15:00 A | 2016-03-22 16:00 A | 42 | 100% |  | 1h | 1h |
| 45 | 2.1.3.1.11.1 | Creating flow of events, info notes, etc. | 1h | 2016-03-22 15:00 A | 2016-03-22 16:00 A |  | 100% | Ahmad [40%]; Maysam [40%]; Muhamad [20%] | 1h | 1h |
| 46 | 2.1.3.1.12 | **Description of <information request from HMO>** | 0.31d | 2016-03-23 08:00 A | 2016-03-23 10:30 A | 44 | 100% |  | 1.95h | 1.95h |
| 47 | 2.1.3.1.12.1 | Creating flow of events, info notes, etc. | 1.5h | 2016-03-23 08:00 A | 2016-03-23 09:30 A |  | 100% | Ahmad [40%]; Maysam [40%]; Muhamad [20%] | 1h | 1h |
| 48 | 2.1.3.1.12.2 | **extended Use Case<complete Record request>** | 0.06d | 2016-03-23 09:30 A | 2016-03-23 10:00 A | 47 | 100% |  | 0.5h | 0.5h |
| 49 | 2.1.3.1.12.2.1 | Creating flow of events, info notes, etc. | 0.5h | 2016-03-23 09:30 A | 2016-03-23 10:00 A |  | 100% | Ahmad [40%]; Maysam [40%]; Muhamad [20%] | 0.5h | 0.5h |

| ID | WBS | Task | Duration | Start | Finish | Predecessors | Complete | Resources | Work | Actual work |
| --- | --- | --- | --- | --- | --- | --- | --- | --- | --- | --- |
| 50 | 2.1.3.1.12.3 | **Extended Use Case<Partial information>** | 0.06d | 2016-03-23 10:00 A | 2016-03-23 10:30 A | 48 | 100% |  | 0.45h | 0.45h |
| 51 | 2.1.3.1.12.3.1 | Creating flow of events, info notes, etc. | 0.5h | 2016-03-23 10:00 A | 2016-03-23 10:30 A |  | 100% | Ahmad [40%]; Maysam [40%]; Muhamad [20%] | 0.45h | 0.45h |
| 52 | 2.1.3.1.13 | **Description of <Submit report>** | 0.19d | 2016-03-21 10:00 A | 2016-03-21 11:30 A | 14SS | 100% |  | 1.5h | 1.5h |
| 53 | 2.1.3.1.13.1 | Creating flow of events, info notes, etc. | 0.5h | 2016-03-21 10:00 A | 2016-03-21 10:30 A |  | 100% | Ahdab [50%]; Boulus [50%] | 0.5h | 0.5h |
| 54 | 2.1.3.1.13.2 | **included Use Case <Save report>** | 0.06d | 2016-03-21 10:30 A | 2016-03-21 11:00 A | 53 | 100% |  | 0.5h | 0.5h |
| 55 | 2.1.3.1.13.2.1 | Creating flow of events, info notes, etc. | 0.5h | 2016-03-21 10:30 A | 2016-03-21 11:00 A |  | 100% | Ahdab [50%]; Boulus [50%] | 0.5h | 0.5h |
| 56 | 2.1.3.1.13.3 | **included Use Case <Send report to Doctor>** | 0.06d | 2016-03-21 11:00 A | 2016-03-21 11:30 A | 54 | 100% |  | 0.5h | 0.5h |
| 57 | 2.1.3.1.13.3.1 | Creating flow of events, info notes, etc. | 0.5h | 2016-03-21 11:00 A | 2016-03-21 11:30 A |  | 100% | Ahdab [50%]; Boulus [50%] | 0.5h | 0.5h |
| 58 | 2.1.3.1.14 | **Description of <Send payment information to HMO>** | 0.21d | 2016-03-21 11:30 A | 2016-03-21 14:10 A | 52 | 100% |  | 1.67h | 1.67h |
| 59 | 2.1.3.1.14.1 | Creating flow of events, info notes, etc. | 40min | 2016-03-21 11:30 A | 2016-03-21 13:10 A |  | 100% | Ahdab [50%]; Boulus [50%] | 0.67h | 0.67h |
| 60 | 2.1.3.1.14.2 | **included Use Case <Enter payment prices>** | 0.12d | 2016-03-21 13:10 A | 2016-03-21 14:10 A | 59 | 100% |  | 1h | 1h |
| 61 | 2.1.3.1.14.2.1 | Creating flow of events, info notes, etc. | 1h | 2016-03-21 13:10 A | 2016-03-21 14:10 A |  | 100% | Ahdab [50%]; Boulus [50%] | 1h | 1h |
| 62 | 2.1.3.1.15 | **Description of <View weekly Report>** | 0.06d | 2016-03-21 14:10 A | 2016-03-21 14:40 A | 58 | 100% |  | 0.5h | 0.5h |
| 63 | 2.1.3.1.15.1 | Creating flow of events, info notes, etc. | 0.5h | 2016-03-21 14:10 A | 2016-03-21 14:40 A |  | 100% | Ahdab [50%]; Boulus [50%] | 0.5h | 0.5h |
| 64 | 2.1.3.1.16 | **Description of <View monthly Report>** | 0.06d | 2016-03-21 14:40 A | 2016-03-21 15:10 A | 62 | 100% |  | 0.5h | 0.5h |
| 65 | 2.1.3.1.16.1 | Creating flow of events, info notes, etc. | 0.5h | 2016-03-21 14:40 A | 2016-03-21 15:10 A |  | 100% | Ahdab [50%]; Boulus [50%] | 0.5h | 0.5h |
| 66 | 2.1.3.1.17 | **Description of <request monthly report>** | 0.06d | 2016-03-21 15:10 A | 2016-03-21 15:40 A | 64 | 100% |  | 0.5h | 0.5h |
| 67 | 2.1.3.1.17.1 | Creating flow of events, info notes, etc. | 0.5h | 2016-03-21 15:10 A | 2016-03-21 15:40 A |  | 100% | Ahdab [50%]; Boulus [50%] | 0.5h | 0.5h |
| 68 | 2.1.3.1.18 | **Description of <View custom Reports>** | 0.22d | 2016-03-21 15:40 A | 2016-03-22 08:25 A | 66 | 100% |  | 1.75h | 1.75h |
| 69 | 2.1.3.1.18.1 | Creating flow of events, info notes, etc. | 45min | 2016-03-21 15:40 A | 2016-03-21 16:25 A |  | 100% | Ahdab [50%]; Boulus [50%] | 0.75h | 0.75h |
| 70 | 2.1.3.1.18.2 | **extended use Case<View periodic Reports>** | 0.06d | 2016-03-21 16:25 A | 2016-03-21 16:55 A | 69 | 100% |  | 0.5h | 0.5h |
| 71 | 2.1.3.1.18.2.1 | Creating flow of events, info notes, etc. | 0.5h | 2016-03-21 16:25 A | 2016-03-21 16:55 A |  | 100% | Ahdab [50%]; Boulus [50%] | 0.5h | 0.5h |
| 72 | 2.1.3.1.18.3 | **extended use Case<View last months Reports>** | 0.06d | 2016-03-21 16:55 A | 2016-03-22 08:25 A | 70 | 100% |  | 0.5h | 0.5h |
| 73 | 2.1.3.1.18.3.1 | Creating flow of events, info notes, etc. | 0.5h | 2016-03-21 16:55 A | 2016-03-22 08:25 A |  | 100% | Ahdab [50%]; Boulus [50%] | 0.5h | 0.5h |

| ID | WBS | Task | Type | Duration | Start | Finish | Predecessors | Complete | Constraint | Resources | Work | Actual work |
| --- | --- | --- | --- | --- | --- | --- | --- | --- | --- | --- | --- | --- |
| 74 | 2.2 | **Week3** |  | 4d | 2016-03-27 08:00 A | 2016-03-30 17:00 A | 9FS+1d | 100% |  |  | 49h | 49h |
| 75 | 2.2.1 | **Creating Use Case diagram -Continues** |  | 1d | 2016-03-27 08:00 A | 2016-03-27 17:00 A |  | 100% |  |  | 8h | 8h |
| 76 | 2.2.1.1 | Meeting - Review Use Case Diagram |  | 2h | 2016-03-27 08:00 A | 2016-03-27 10:00 A |  | 100% |  | Ahdab [20%]; Ahmad [20%]; Boulus [20%]; Maysam [20%]; Muhamad [20%] | 2h | 2h |
| 77 | 2.2.1.2 | Fixing found problems |  | 6h | 2016-03-27 10:00 A | 2016-03-27 17:00 A | 76 | 100% |  | Ahdab [20%]; Ahmad [20%]; Boulus [20%]; Maysam [20%]; Muhamad [20%] | 6h | 6h |
| 78 | 2.2.2 | Use Case Diagram is finished | milestone | 0d | 2016-03-27 17:00 A | 2016-03-27 17:00 A | 13, 75, 77 | 100% |  |  |  |  |
| 79 | 2.2.3 | **Creating Acceptance Testing** |  | 2d | 2016-03-28 08:00 A | 2016-03-29 17:00 A | 78 | 100% |  |  | 33h | 33h |
| 80 | 2.2.3.1 | Test Case for functionality of <Documentation of HMO Approval> |  | 2h | 2016-03-28 08:00 A | 2016-03-28 10:00 A |  | 100% |  | Muhamad | 2h | 2h |
| 81 | 2.2.3.2 | Test Case for functionality of: <Add New Patient> |  | 1h | 2016-03-28 10:00 A | 2016-03-28 11:00 A | 80 | 100% |  | Muhamad | 1h | 1h |
| 82 | 2.2.3.3 | Test Case for functionality of <Patient Identification> |  | 1h | 2016-03-28 11:00 A | 2016-03-28 12:00 A | 81 | 100% |  | Muhamad | 1h | 1h |
| 83 | 2.2.3.4 | Test Case for functionality of <Appointment Setting><Choose speciality><Choose Doctor><Choose Time> |  | 1h | 2016-03-28 13:00 A | 2016-03-28 14:00 A | 82 | 100% |  | Muhamad | 1h | 1h |
| 84 | 2.2.3.5 | Test Case for functionality of <Cancel Appointment> |  | 1h | 2016-03-28 14:00 A | 2016-03-28 15:00 A | 83 | 100% |  | Muhamad | 1h | 1h |
| 85 | 2.2.3.6 | Test Case for functionality of < Visit documentation > |  | 1.5h | 2016-03-28 08:00 A | 2016-03-28 09:30 A | 80SS, 84 | 100% |  | Maysam | 1.5h | 1.5h |
| 86 | 2.2.3.7 | Test Case for functionality of <open medical record > |  | 1h | 2016-03-28 09:30 A | 2016-03-28 10:30 A | 85 | 100% |  | Maysam | 1h | 1h |
| 87 | 2.2.3.8 | Test Case for functionality of <viewing medical record ><searching> |  | 2h | 2016-03-28 10:30 A | 2016-03-28 13:30 A | 86 | 100% |  | Maysam | 2h | 2h |
| 88 | 2.2.3.9 | Test Case for functionality of <producing medical test referral > |  | 1.5h | 2016-03-28 13:30 A | 2016-03-28 15:00 A | 87 | 100% |  | Maysam | 1.5h | 1.5h |
| 89 | 2.2.3.10 | Test Case for functionality of <viewing referral info > |  | 1h | 2016-03-28 15:00 A | 2016-03-28 16:00 A | 88 | 100% |  | Maysam | 1h | 1h |
| 90 | 2.2.3.11 | Test Case for functionality of <request monthly report> |  | 1h | 2016-03-28 08:00 A | 2016-03-28 09:00 A | 80SS, 89 | 100% |  | Ahdab | 1h | 1h |
| 91 | 2.2.3.12 | Test Case for functionality of <view weekly report> |  | 1h | 2016-03-28 09:00 A | 2016-03-28 10:00 A | 90 | 100% |  | Ahdab | 1h | 1h |
| 92 | 2.2.3.13 | Test Case for functionality of <View monthly Report> |  | 1h | 2016-03-28 10:00 A | 2016-03-28 11:00 A | 91 | 100% |  | Ahdab | 1h | 1h |
| 93 | 2.2.3.14 | Test Case for functionality of <View custom Reports><View last months Reports><View periodic Reports> |  | 2h | 2016-03-28 11:00 A | 2016-03-28 14:00 A | 92 | 100% |  | Ahdab | 2h | 2h |
| 94 | 2.2.3.15 | Test Case for functionality of <Filling test results> |  | 1h | 2016-03-28 08:00 A | 2016-03-28 09:00 A | 80SS, 93 | 100% |  | Ahmad | 1h | 1h |
| 95 | 2.2.3.16 | Test Case for functionality of <information request from HMO><complete Record request><Partial information request> |  | 2h | 2016-03-28 09:00 A | 2016-03-28 11:00 A | 94 | 100% |  | Ahmad | 2h | 2h |
| 96 | 2.2.3.17 | Test Case for functionality of <Send payment information to HMO><Enter payment prices> |  | 1h | 2016-03-28 08:00 A | 2016-03-28 09:00 A | 80SS, 95 | 100% |  | Boulus | 1h | 1h |
| 97 | 2.2.3.18 | Test Case for functionality of <Login> |  | 1h | 2016-03-28 09:00 A | 2016-03-28 10:00 A | 96 | 100% |  | Boulus | 1h | 1h |
| 98 | 2.2.3.19 | Test Case for functionality of <Submit report><Send report to Doctor><Save report> |  | 2h | 2016-03-28 10:00 A | 2016-03-28 12:00 A | 97 | 100% |  | Boulus | 2h | 2h |
| 99 | 2.2.3.20 | Meeting - Review Acceptance Testing |  | 1d | 2016-03-29 08:00 A | 2016-03-29 17:00 A | 98 | 100% | start no earlier than 2016-03-29 08:00 | Ahdab [20%]; Ahmad [20%]; Boulus [20%]; Maysam [20%]; Muhamad [20%] | 8h | 8h |
| 100 | 2.2.3.21 | Acceptance Testing is finished | milestone | 0d | 2016-03-29 17:00 A | 2016-03-29 17:00 A | 99 | 100% |  |  |  |  |
| 101 | 2.2.4 | Answer questions |  | 1d | 2016-03-30 08:00 A | 2016-03-30 17:00 A | 100 | 100% |  | Ahdab [20%]; Ahmad [20%]; Boulus [20%]; Maysam [20%]; Muhamad [20%] | 8h | 8h |

Notes:
- 76: Everyone presents the most complicated UC and its flow of events.

| ID | WBS | Task | Type | Duration | Start | Finish | Predecessors | Complete | Remaining | Total slack | Free slack | Constraint | Resources | Work | Actual work |
| --- | --- | --- | --- | --- | --- | --- | --- | --- | --- | --- | --- | --- | --- | --- | --- |
| 102 | 2.3 | **Week 4- Part A** |  | 1d | 2016-04-03 08:00 A | 2016-04-03 17:00 A | 74FS+1d | 100% |  |  |  |  |  | 8h | 8h |
| 103 | 2.3.1 | Meeting - Review all tasks |  | 1d | 2016-04-03 08:00 A | 2016-04-03 17:00 A | 101 | 100% |  |  |  |  | Ahdab [20%]; Ahmad [20%]; Boulus [20%]; Maysam [20%]; Muhamad [20%] | 8h | 8h |
| 104 | 2.3.2 | Submission ONE is finished | milestone | 0d | 2016-04-03 17:00 A | 2016-04-03 17:00 A | 103 | 100% |  |  |  |  |  |  |  |
| 105 | 3 | SUBMIT Task One | milestone | 0d | 2016-04-04 08:00 A | 2016-04-04 08:00 A | 104 | 100% |  |  |  | start no earlier than 2016-04-04 08:00 |  |  |  |
| 106 | 4 | **Submission TWO: Class, Activity, Sequence, Package, Deployment Diagrams, Prototype, Questions** |  | 15d | 2016-04-04 08:00 A | 2016-05-01 17:00 | 105 | 39% | 9.2d | 0d |  |  |  | 37.33h | 29.33h |
| 107 | 4.1 | **Week 4 - Continue** |  | 1d | 2016-04-04 08:00 A | 2016-04-04 17:00 |  | 88% | 0.12d | 3d |  |  |  |  |  |
| 108 | 4.1.1 | **Design of a system Step2** |  | 1d | 2016-04-04 08:00 A | 2016-04-04 17:00 A |  | 100% |  |  |  |  |  |  |  |
| 109 | 4.1.1.1 | **Creating Class diagram** |  | 1d | 2016-04-04 08:00 A | 2016-04-04 17:00 A |  | 100% |  |  |  |  |  |  |  |
| 110 | 4.1.1.1.1 | Defining Entiies |  | 1d | 2016-04-04 08:00 A | 2016-04-04 17:00 A | 104 | 100% |  |  |  |  |  |  |  |
| 111 | 4.1.1.1.2 | Defining Controllers |  | 0.5d | 2016-04-04 08:00 A | 2016-04-04 12:00 A | 110 | 100% |  |  |  |  |  |  |  |
| 112 | 4.1.1.1.3 | Defining Boundaries |  | 0.5d | 2016-04-04 08:00 A | 2016-04-04 12:00 A | 111 | 100% |  |  |  |  |  |  |  |
| 113 | 4.1.1.1.4 | defining Server |  | 0.25d | 2016-04-04 08:00 A | 2016-04-04 10:00 A | 104, 112 | 100% |  |  |  |  |  |  |  |
| 114 | 4.1.1.1.5 | Defining Client |  | 0.25d | 2016-04-04 08:00 A | 2016-04-04 10:00 A | 104, 113 | 100% |  |  |  |  |  |  |  |
| 115 | 4.1.1.1.6 | integration |  | 1d | 2016-04-04 08:00 A | 2016-04-04 17:00 A | 104, 110, 111, 114 | 100% |  |  |  |  |  |  |  |
| 116 | 4.1.2 | Defining packages |  | 0.5d | 2016-04-04 08:00 | 2016-04-04 12:00 | 105 |  |  | 3.5d |  |  |  |  |  |
| 117 | 4.2 | **Week5** |  | 4.48d | 2016-04-10 08:00 A | 2016-04-14 11:50 | 107 | 42% | 2.62d | 0.77d | 0d |  |  | 37.33h | 29.33h |
| 118 | 4.2.1 | Meeting - Review Class Diagram |  | 2h | 2016-04-10 08:00 A | 2016-04-10 10:00 A |  | 100% |  |  |  | start no earlier than 2016-04-10 08:00 |  |  |  |
| 119 | 4.2.2 | Class Diagram is finished | milestone | 0d | 2016-04-10 10:00 A | 2016-04-10 10:00 A | 118 | 100% |  |  |  |  |  |  |  |
| 120 | 4.2.3 | **Creating Activity Diagrams** |  | 2.85d | 2016-04-10 10:00 A | 2016-04-13 08:50 A | 119 | 100% |  |  |  |  |  | 22.83h | 22.83h |
| 121 | 4.2.3.1 | Activity Diagram for <Login > |  | 30min | 2016-04-10 10:00 A | 2016-04-10 10:30 A |  | 100% |  |  |  |  | Boulus | 0.5h | 0.5h |
| 122 | 4.2.3.2 | Activity Diagram for<Save Report> |  | 30min | 2016-04-10 10:30 A | 2016-04-10 11:00 A | 121 | 100% |  |  |  |  | Boulus | 0.5h | 0.5h |
| 123 | 4.2.3.3 | Activity Diagram for<Send Report To Doctor> |  | 40min | 2016-04-10 11:00 A | 2016-04-10 11:40 A | 122 | 100% |  |  |  |  | Boulus | 0.67h | 0.67h |
| 124 | 4.2.3.4 | Activity Diagram for<Send Payment information> |  | 1h | 2016-04-10 11:40 A | 2016-04-10 13:40 A | 123 | 100% |  |  |  |  | Boulus | 1h | 1h |
| 125 | 4.2.3.5 | Activity Diagram for <Submit Report> |  | 1h | 2016-04-10 13:40 A | 2016-04-10 14:40 A | 124 | 100% |  |  |  |  | Boulus | 1h | 1h |
| 126 | 4.2.3.6 | Activity Diagram for<View Weekly Report> |  | 1h | 2016-04-10 14:40 A | 2016-04-10 15:40 A | 125 | 100% |  |  |  |  | Ahdab | 1h | 1h |
| 127 | 4.2.3.7 | Activity Diagram for<Request Monthly Report> |  | 50min | 2016-04-10 15:40 A | 2016-04-10 16:30 A | 126 | 100% |  |  |  |  | Ahdab | 0.83h | 0.83h |
| 128 | 4.2.3.8 | Activity Diagram for<View Monthly Report> |  | 30min | 2016-04-10 16:30 A | 2016-04-10 17:00 A | 127 | 100% |  |  |  |  | Ahdab | 0.5h | 0.5h |
| 129 | 4.2.3.9 | Activity Diagram for<View Custom Reports> |  | 2h | 2016-04-11 08:00 A | 2016-04-11 10:00 A | 128 | 100% |  |  |  |  | Ahdab | 2h | 2h |
| 130 | 4.2.3.10 | Activity Diagram for <Appointment Setting> |  | 3h | 2016-04-11 10:00 A | 2016-04-11 14:00 A | 129 | 100% |  |  |  |  | Muhamad | 3h | 3h |
| 131 | 4.2.3.11 | Activity Diagram for <Cancel Appointment> |  | 50min | 2016-04-11 14:00 A | 2016-04-11 14:50 A | 130 | 100% |  |  |  |  | Muhamad | 0.83h | 0.83h |
| 132 | 4.2.3.12 | Activity Diagram for <Patient Identification> |  | 1h | 2016-04-11 14:50 A | 2016-04-11 15:50 A | 131 | 100% |  |  |  |  | Muhamad | 1h | 1h |
| 133 | 4.2.3.13 | Meeting - Review Activity Diagram |  | 10h | 2016-04-11 15:50 A | 2016-04-13 08:50 A | 121, 132 | 100% |  |  |  |  | Ahdab [20%]; Ahmad [20%]; Boulus [20%]; Maysam [20%]; Muhamad [20%] | 10h | 10h |
| 134 | 4.2.3.14 | Activity Diagram is finished | milestone | 0d | 2016-04-13 08:50 A | 2016-04-13 08:50 A | 133 | 100% |  |  |  |  |  |  |  |

| ID | WBS | Task | Type | Duration | Start | Finish | Predecessors | Complete | Remaining | Total slack | Free slack | Constraint | Resources | Work | Actual work |
| --- | --- | --- | --- | --- | --- | --- | --- | --- | --- | --- | --- | --- | --- | --- | --- |
| 135 | 4.2.4 | **Creating Sequence Diagrams** |  | 4.23d | 2016-04-10 10:00 A | 2016-04-14 11:50 | 120 | 13% | 3.68d | 0.77d |  |  |  | 14.5h | 6.5h |
| 136 | 4.2.4.1 | Sequence Diagram for<view Monthly Report> |  | 1h | 2016-04-11 13:30 A | 2016-04-11 14:30 A | 119 | 100% |  |  |  |  | Ahdab | 1h | 1h |
| 137 | 4.2.4.2 | Sequence Diagram for <Request Monthly Report> |  | 0.5h | 2016-04-10 10:00 A | 2016-04-10 10:30 A | 119 | 100% |  |  |  |  | Ahdab | 0.5h | 0.5h |
| 138 | 4.2.4.3 | Sequence Diagram for <View Custom Report> |  | 11h | 2016-04-10 10:00 A | 2016-04-14 11:50 | 119 | 27% | 8h | 0.77d |  |  | Ahdab | 11h | 3h |
| 139 | 4.2.4.4 | Sequence Diagram for <View Weekly Report> |  | 2h | 2016-04-10 10:00 A | 2016-04-10 12:00 A | 119 | 100% |  |  |  |  | Ahdab | 2h | 2h |
| 140 | 4.2.4.5 | <New Task> | manual | 1d | 2016-04-10 10:00 | 2016-04-11 10:00 |  |  |  |  |  |  |  |  |  |
| 141 | 4.2.4.6 | <New Task> | manual | 1d | 2016-04-10 10:00 | 2016-04-11 10:00 |  |  |  |  |  |  |  |  |  |
| 142 | 4.2.4.7 | <New Task> | manual | 1d | 2016-04-10 10:00 | 2016-04-11 10:00 |  |  |  |  |  |  |  |  |  |
| 143 | 4.2.4.8 | <New Task> | manual | 1d | 2016-04-10 10:00 | 2016-04-11 10:00 |  |  |  |  |  |  |  |  |  |
| 144 | 4.2.4.9 | Meeting - Review Sequence Diagram |  | 0.5d | 2016-04-13 08:50 | 2016-04-13 13:50 | 136 |  |  | 1.65d | 0d |  |  |  |  |
| 145 | 4.2.4.10 | Sequence Diagram is finished | milestone | 0d | 2016-04-13 13:50 | 2016-04-13 13:50 | 144 |  |  | 1.65d |  |  |  |  |  |
| 146 | 4.3 | **Week 6** |  | 4.75d | 2016-04-14 11:50 | 2016-04-21 09:50 | 117 |  |  | 0.77d |  |  |  |  |  |
| 147 | 4.3.1 | **Creating Packages and Deployment diagrams** |  | 1.25d | 2016-04-14 11:50 | 2016-04-17 14:50 |  |  |  | 0.77d | 0d |  |  |  |  |
| 148 | 4.3.1.1 | Creating Packages and Deployment diagrams |  | 1d | 2016-04-14 11:50 | 2016-04-17 11:50 |  |  |  | 0.77d | 0d |  |  |  |  |
| 149 | 4.3.1.2 | Meeting - Review Packages & Deployment Diagrams |  | 2h | 2016-04-17 11:50 | 2016-04-17 14:50 | 148 |  |  | 0.77d | 0d |  |  |  |  |
| 150 | 4.3.1.3 | Packages & Deployment Diagrams are finished | milestone | 0d | 2016-04-17 14:50 | 2016-04-17 14:50 | 149 |  |  | 0.77d |  |  |  |  |  |
| 151 | 4.3.2 | Answer questions |  | 0.5d | 2016-04-17 14:50 | 2016-04-18 09:50 | 147 |  |  | 0.77d | 0d |  |  |  |  |
| 152 | 4.3.3 | Development Prototype on the base of OCSF |  | 3d | 2016-04-18 09:50 | 2016-04-21 09:50 | 151 |  |  | 0.77d |  |  |  |  |  |
| 153 | 4.4 | **Week7-TBD continues** |  | 1d | 2016-05-01 08:00 | 2016-05-01 17:00 | 146 |  |  |  |  |  |  |  |  |
| 154 | 4.4.1 | Testing Prototype |  | 1d | 2016-05-01 08:00 | 2016-05-01 17:00 | 152 |  |  | 0d |  |  |  |  |  |
| 155 | 4.4.2 | Releasing Prototype | milestone | 0d | 2016-05-01 17:00 | 2016-05-01 17:00 | 154 |  |  | 0d |  |  |  |  |  |
| 156 | 4.4.3 | Submission TWO is finished | milestone | 0d | 2016-05-01 17:00 | 2016-05-01 17:00 | 155 |  |  | 0d |  |  |  |  |  |
| 157 | 5 | SUBMIT Task Two | milestone | 0d | 2016-05-02 08:00 | 2016-05-02 08:00 |  |  |  | 0d |  | start no earlier than 2016-05-02 08:00 |  |  |  |
| 158 | 6 | **Submission THREE: Development Code, Questions** |  | 25d | 2016-05-02 08:00 | 2016-06-13 08:00 | 156, 157 |  |  | 0d |  |  |  |  |  |
| 159 | 6.1 | **Development project code on the base of Class and other diagrams** |  | 20d | 2016-05-02 08:00 | 2016-06-02 17:00 |  |  |  |  |  |  |  |  |  |
| 160 | 6.1.1 | **Development DataBase** |  | 2d | 2016-05-02 08:00 | 2016-05-03 17:00 |  |  |  |  |  |  |  |  |  |
| 161 | 6.1.1.1 | Defining and creating: <Name of Table 1>, <Name of Table 2> |  | 0.5d | 2016-05-02 08:00 | 2016-05-02 12:00 |  |  |  | 1d | 0d |  |  |  |  |
| 162 | 6.1.1.2 | Defining and creating <Name of Table 2> |  | 0.5d | 2016-05-02 13:00 | 2016-05-02 17:00 | 161 |  |  | 1d |  |  |  |  |  |

| ID | WBS | Task | Type | Duration | Start | Finish | Predecessors | Total slack | Free slack | Constraint |
| --- | --- | --- | --- | --- | --- | --- | --- | --- | --- | --- |
| 163 | 6.1.2 | **Realization Three-tier Model** |  | 18d | 2016-05-03 08:00 | 2016-06-01 17:00 | 160 |  |  |  |
| 164 | 6.1.2.1 | **Client Design and Realization** |  | 5d | 2016-05-03 08:00 | 2016-05-09 17:00 |  |  |  |  |
| 165 | 6.1.2.1.1 | Client GUI design and realization |  | 2d | 2016-05-03 08:00 | 2016-05-04 17:00 |  | 0d |  |  |
| 166 | 6.1.2.1.2 | Defining Controllers and their realization |  | 2d | 2016-05-05 08:00 | 2016-05-08 17:00 | 165 | 0d |  |  |
| 167 | 6.1.2.1.3 | Testing & Debugging Code |  | 1d | 2016-05-09 08:00 | 2016-05-09 17:00 | 166 | 0d |  |  |
| 168 | 6.1.2.2 | **Server design and realization** |  | 7d | 2016-05-10 08:00 | 2016-05-22 17:00 | 164 |  |  |  |
| 169 | 6.1.2.2.1 | Server GUI |  | 1d | 2016-05-10 08:00 | 2016-05-10 17:00 |  | 1.75d | 0d |  |
| 170 | 6.1.2.2.2 | Realization interaction with DataBase |  | 1d | 2016-05-15 08:00 | 2016-05-15 17:00 | 169 | 1.75d | 0d |  |
| 171 | 6.1.2.2.3 | Testing & Debugging Code |  | 1d | 2016-05-16 08:00 | 2016-05-16 17:00 | 170 | 1.75d | 0d |  |
| 172 | 6.1.2.2.4 | **Realization Controllers** |  | 4d | 2016-05-17 08:00 | 2016-05-22 17:00 | 171 |  |  |  |
| 173 | 6.1.2.2.4.1 | Controller1, controller2 |  | 0.5d | 2016-05-17 08:00 | 2016-05-17 12:00 |  | 1.75d | 0d |  |
| 174 | 6.1.2.2.4.2 | Controller3 |  | 2h | 2016-05-17 13:00 | 2016-05-17 15:00 | 173 | 1.75d | 0d |  |
| 175 | 6.1.2.2.4.3 | Testing & Debugging Code |  | 1.5d | 2016-05-17 15:00 | 2016-05-19 10:00 | 174 | 1.75d |  |  |
| 176 | 6.1.2.3 | **Entity Realization JDBC/Hibernate (ORM) or their mix** |  | 3d | 2016-05-19 10:00 | 2016-05-26 10:00 | 168 |  |  |  |
| 177 | 6.1.2.3.1 | Realization <Entity1>, <Entity2>, <Entity3> |  | 3h | 2016-05-19 10:00 | 2016-05-19 14:00 |  | 2.5d | 0d |  |
| 178 | 6.1.2.3.2 | Realization <Entity4> |  | 1h | 2016-05-19 14:00 | 2016-05-19 15:00 | 177 | 2.5d |  |  |
| 179 | 6.1.2.4 | Realization Client-Server interaction on the base of OCSF |  | 2d | 2016-05-26 10:00 | 2016-05-30 10:00 | 176 | 1.75d | 0d |  |
| 180 | 6.1.2.5 | Testing & Debugging Code |  | 1d | 2016-05-30 10:00 | 2016-05-31 10:00 | 179 | 1.75d |  |  |
| 181 | 6.2 | Integration the Code |  | 1d | 2016-06-05 08:00 | 2016-06-05 17:00 | 159 | 9.75d | 0d |  |
| 182 | 6.3 | Final review meeting |  | 2h | 2016-06-06 08:00 | 2016-06-06 10:00 | 181 | 9.75d |  |  |
| 183 | 6.4 | Submission THREE is finished | milestone | 0d | 2016-06-13 08:00 | 2016-06-13 08:00 |  | 0d |  | start no earlier than 2016-06-13 08:00 |
| 184 | 7 | **Submission FOUR: Testing Project** |  | 6d | 2016-06-13 08:00 | 2016-06-20 17:00 | 183 | 0d |  |  |
| 185 | 7.1 | **Testing Project** |  | 4d | 2016-06-13 08:00 | 2016-06-16 17:00 |  |  |  |  |
| 186 | 7.1.1 | **Unit Testing** |  | 2d | 2016-06-13 08:00 | 2016-06-14 17:00 |  |  |  |  |
| 187 | 7.1.1.1 | Functionality 1 (Method1(), Method2()) |  | 1d | 2016-06-13 08:00 | 2016-06-13 17:00 |  | 0d |  |  |
| 188 | 7.1.1.2 | Functionality 2 (Method1(), Method2()) |  | 1d | 2016-06-14 08:00 | 2016-06-14 17:00 | 187 | 0d |  |  |

| ID | WBS | Task | Type | Duration | Start | Finish | Predecessors | Total slack | Constraint |
| --- | --- | --- | --- | --- | --- | --- | --- | --- | --- |
| 189 | 7.1.2 | **Acceptance Testing** |  | 2d | 2016-06-13 08:00 | 2016-06-14 17:00 | 186 |  |  |
| 190 | 7.1.2.1 | Use Case 1 |  | 1d | 2016-06-13 08:00 | 2016-06-13 17:00 |  | 0d |  |
| 191 | 7.1.2.2 | Use Case 2 |  | 1d | 2016-06-14 08:00 | 2016-06-14 17:00 | 190 | 0d |  |
| 192 | 7.2 | Testing and Debugging |  | 2d | 2016-06-19 08:00 | 2016-06-20 17:00 | 185 | 0d |  |
| 193 | 7.3 | Submission FOUR is finished | milestone | 0d | 2016-06-20 17:00 | 2016-06-20 17:00 | 192 | 0d |  |
| 194 | 8 | Project is Finished! | milestone | 0d | 2016-06-21 08:00 | 2016-06-21 08:00 | 193 | 0d | start no earlier than 2016-06-21 08:00 |
